# SGT

How a schedule from MS Project changed from version to version. A marks actual dates.

## Version 1 (saved 2010-11-30, file Cronograma.mpp)

Note of the change: Sistema de Gestão Summary

| ID | WBS | Task | Duration | Start | Finish | Predecessors | Total float |
| --- | --- | --- | --- | --- | --- | --- | --- |
| 1 | 1 | **FNQ - Ssistemas de Gestão** | 60d? | 2010-12-01 | 2011-02-25 |  | 0d |
| 2 | 1.1 | **Construção** | 48d | 2010-12-01 | 2011-02-09 |  | 0d |
| 3 | 1.1.1 | **Ambiente** | 9d | 2010-12-01 | 2010-12-13 |  | 0d |
| 4 |  | Montagem do Ambiente | 1.5d | 2010-12-01 | 2010-12-02 |  | 0d |
| 5 |  | Definição Arquitetura | 1.5d | 2010-12-02 | 2010-12-03 | 4 | 0d |
| 6 |  | Importação de dados | 9d | 2010-12-01 | 2010-12-13 |  | 39d |
| 7 |  | Elaboração dos Scripts de Teste | 4d | 2010-12-01 | 2010-12-06 |  | 44d |
| 8 | 1.1.2 | **1a. Iteração** | 45d | 2010-12-06 | 2011-02-09 |  | 0d |
| 9 | 1.1.2.1 | **Identidade Visual** | 3d | 2010-12-06 | 2010-12-08 |  | 0d |
| 10 |  | Skins | 1.5d | 2010-12-06 | 2010-12-07 | 5 | 0d |
| 11 |  | Identidade Básica | 1.5d | 2010-12-07 | 2010-12-08 | 10 | 0d |
| 12 | 1.1.2.2 | **Segurança** | 7d | 2010-12-09 | 2010-12-17 |  | 7d |
| 13 |  | Alterar Senha | 1d | 2010-12-09 | 2010-12-09 | 11 | 7d |
| 14 |  | Autenticar Sistema | 2d | 2010-12-10 | 2010-12-13 | 13 | 7d |
| 15 |  | Manter Grupo de Acesso | 2d | 2010-12-14 | 2010-12-15 | 14 | 7d |
| 16 |  | Manter Usuário | 1d | 2010-12-16 | 2010-12-16 | 15 | 7d |
| 17 |  | Solicitar Senha | 1d | 2010-12-17 | 2010-12-17 | 16 | 7d |
| 18 | 1.1.2.3 | **Administrativo** | 15d | 2010-12-09 | 2010-12-30 |  | 0d |
| 19 |  | Gerenciar Etapa | 2d | 2010-12-20 | 2010-12-21 | 17 | 7d |
| 20 |  | Manter Arquivos | 2d | 2010-12-22 | 2010-12-23 | 19 | 7d |
| 21 |  | Manter Associação Usuário x Grupo de Acesso | 1d | 2010-12-27 | 2010-12-27 | 20 | 7d |
| 22 |  | Manter Atendimento | 2d | 2010-12-28 | 2010-12-29 | 21 | 7d |
| 23 |  | Manter Escritório Regional | 1d | 2010-12-30 | 2010-12-30 | 22 | 7d |
| 24 |  | Manter Grupo de Empresa | 1d | 2010-12-09 | 2010-12-09 | 11 | 0d |
| 25 |  | Manter Notícia | 1d | 2010-12-10 | 2010-12-10 | 24 | 0d |
| 26 |  | Manter Turma | 2d | 2010-12-13 | 2010-12-14 | 25 | 0d |
| 27 |  | Visualizar Resumo | 1d | 2010-12-15 | 2010-12-15 | 26 | 0d |
| 28 |  | Gerenciar Etapas MPE | 2d | 2010-12-16 | 2010-12-17 | 27 | 0d |
| 29 |  | Iniciar Turma | 1d | 2010-12-20 | 2010-12-20 | 28 | 0d |
| 30 |  | Geração de Logs | 1d | 2010-12-21 | 2010-12-21 | 29 | 0d |
| 31 | 1.1.2.4 | **Inscrição e Questionário** | 14d | 2010-12-22 | 2011-01-12 |  | 0d |
| 32 |  | Atualizar Histórico SIACWEB | 2d | 2011-01-03 | 2011-01-04 | 23 | 7d |
| 33 |  | Atualizar Inscrição SIACWEB | 2d | 2011-01-05 | 2011-01-06 | 32 | 7d |
| 34 |  | Enviar Questionário | 3d | 2011-01-07 | 2011-01-11 | 33 | 7d |
| 35 |  | Relatorio Inscritas | 1d | 2011-01-12 | 2011-01-12 | 34 | 7d |
| 36 |  | Gerar Protocolo | 0d | 2011-01-12 | 2011-01-12 | 35 | 7d |
| 37 |  | Manter Contato | 0d | 2011-01-12 | 2011-01-12 | 36 | 7d |
| 38 |  | Manter Inscrição Administrador | 1d | 2010-12-22 | 2010-12-22 | 30 | 0d |
| 39 |  | Manter Inscrição Empresa | 1d | 2010-12-23 | 2010-12-23 | 38 | 0d |
| 40 |  | Responder Questionário | 3d | 2010-12-27 | 2010-12-29 | 39 | 0d |
| 41 |  | Imprimir Etiquetas | 1d | 2010-12-30 | 2010-12-30 | 40 | 0d |
| 42 | 1.1.2.5 | **Pontuação e RAA** | 4d | 2011-01-13 | 2011-01-18 |  | 7d |
| 43 |  | Gerar RAA | 2d | 2011-01-13 | 2011-01-14 | 37 | 7d |
| 44 |  | Visualizar Histórico Pontuação | 2d | 2011-01-17 | 2011-01-18 | 43 | 7d |
| 45 | 1.1.2.6 | **Ranking e Avaliação** | 14d | 2011-01-03 | 2011-01-20 |  | 0d |
| 46 |  | Empresas Candidatas | 3d | 2011-01-03 | 2011-01-05 | 41 | 0d |
| 47 |  | Empresas Classificadas | 3d | 2011-01-06 | 2011-01-10 | 46 | 0d |
| 48 |  | Candidata Estadual | 0d | 2011-01-10 | 2011-01-10 | 47 | 0d |
| 49 |  | Candidata Nacional | 0d | 2011-01-10 | 2011-01-10 | 48 | 0d |
| 50 |  | Classificada Estadual | 0d | 2011-01-10 | 2011-01-10 | 49 | 0d |
| 51 |  | Classificada Nacional | 1d | 2011-01-11 | 2011-01-11 | 50 | 0d |
| 52 |  | Empresas Finalistas | 1d | 2011-01-19 | 2011-01-19 | 44 | 7d |
| 53 |  | Exportar Relatório Ranking | 1d | 2011-01-20 | 2011-01-20 | 52 | 7d |
| 54 |  | Finalista Estadual | 0d | 2011-01-20 | 2011-01-20 | 53 | 7d |
| 55 |  | Finalista Nacional | 0d | 2011-01-20 | 2011-01-20 | 54 | 7d |
| 56 |  | Manter Avaliação de Classificadas | 2d | 2011-01-12 | 2011-01-13 | 51 | 0d |
| 57 |  | Visualizar Ranking | 1d | 2011-01-14 | 2011-01-14 | 56 | 0d |
| 58 |  | Gerar Formulário de Visitas | 1d | 2011-01-17 | 2011-01-17 | 57 | 0d |
| 59 | 1.1.2.7 | **Relatório** | 12d | 2011-01-18 | 2011-02-03 |  | 0d |
| 60 |  | Gerar Relatório | 0d | 2011-01-20 | 2011-01-20 | 55 | 7d |
| 61 |  | Enviar Relatório por E-mail | 2d | 2011-01-21 | 2011-01-24 | 60 | 7d |
| 62 |  | Desempenho Global | 2d | 2011-01-26 | 2011-01-27 | 61 | 7d |
| 63 |  | Preenchimento de Inscrições | 2d | 2011-01-28 | 2011-01-31 | 62 | 7d |
| 64 |  | Gerar Gráfico | 2d | 2011-01-18 | 2011-01-19 | 58 | 0d |
| 65 |  | Imprimir Relatório | 2d | 2011-01-20 | 2011-01-21 | 64 | 0d |
| 66 |  | Número de Participantes por Etapa | 2d | 2011-01-24 | 2011-01-26 | 65 | 0d |
| 67 |  | Panorama das respostas dos Questionários | 2d | 2011-01-27 | 2011-01-28 | 66 | 0d |
| 68 |  | Empresas Inscritas e Candidatas por digitador | 2d | 2011-01-31 | 2011-02-01 | 67 | 0d |
| 69 |  | Exportar Relatório | 0d | 2011-02-01 | 2011-02-01 | 68 | 0d |
| 70 |  | Gerar Relatório | 0d | 2011-02-01 | 2011-02-01 | 69 | 0d |

| ID | WBS | Task | Duration | Start | Finish | Predecessors | Total float |
| --- | --- | --- | --- | --- | --- | --- | --- |
| 71 |  | Relação de Participantes por Região | 2d | 2011-02-02 | 2011-02-03 | 70 | 0d |
| 72 | 1.1.2.8 | **Finalização da 1a Iteração** | 4d | 2011-02-04 | 2011-02-09 |  | 0d |
| 73 |  | Testes | 3d | 2011-02-04 | 2011-02-08 | 71 | 0d |
| 74 |  | Aceite | 1d | 2011-02-09 | 2011-02-09 | 73 | 0d |
| 75 | 1.1.3 | **Finalização** | 2d | 2010-12-01 | 2010-12-02 |  | 46d |
| 76 |  | Instalação em ambiente de homologação | 1d | 2010-12-01 | 2010-12-01 |  | 46d |
| 77 |  | Reunião de Acompanhamento - Status Report | 1d | 2010-12-02 | 2010-12-02 | 76 | 46d |
| 78 | 1.2 | **Implantação** | 12d? | 2011-02-10 | 2011-02-25 | 2 | 0d |
| 79 | 1.2.1 | **Atividades de Implantação** | 4d | 2011-02-10 | 2011-02-15 |  | 0d |
| 80 |  | Instalação no Ambiente de Produção | 1d | 2011-02-10 | 2011-02-10 |  | 0d |
| 81 |  | Testes Integrados - Cenários de Teste e Correção de Bugs | 3d | 2011-02-11 | 2011-02-15 | 80 | 0d |
| 82 |  | Homologação pelo Cliente | 3d | 2011-02-16 | 2011-02-18 | 81 | 0d |
| 83 |  | Aceite | 1d | 2011-02-21 | 2011-02-21 | 82 | 0d |
| 84 |  | Elaboração e Aplicação do Treinamento | 3d | 2011-02-22 | 2011-02-24 | 83 | 0d |
| 85 |  | Reunião de Encerrameto | 0.5d | 2011-02-25 | 2011-02-25 | 84 | 0d |
| 86 |  | Go-Live & Suporte | 0.5d | 2011-02-25 | 2011-02-25 | 85 | 0d |

## Version 2 (saved 2011-01-14, file Cronograma MPE.mpp)

Note of the change: Sistema de Gestão Summary

Last finish 2011-02-25 → 2011-02-09 (-16d). Complete tasks 0 → 18.

Added:

| ID | Task | Duration | Start | Finish |
| --- | --- | --- | --- | --- |
| 49 | **Demais casos de uso** | 35d | 2010-12-01 A | 2011-01-12 |

Removed: 15 Manter Grupo de Acesso; 19 Gerenciar Etapa; 26 Manter Turma; 29 Iniciar Turma; 36 Gerar Protocolo; 37 Manter Contato; 48 Candidata Estadual; 49 Candidata Nacional; 50 Classificada Estadual; 51 Classificada Nacional; 54 Finalista Estadual; 55 Finalista Nacional; 57 Visualizar Ranking; 60 Gerar Relatório; 64 Gerar Gráfico; 67 Panorama das respostas dos Questionários; 70 Gerar Relatório

Changed:

| ID | Task | Start | Finish | Duration | Complete | Total float | Predecessors | Other |
| --- | --- | --- | --- | --- | --- | --- | --- | --- |
| 1 | **FNQ - Sistemas de Gestão - MPE** | 2010-12-01 A | 2011-02-25 → 2011-02-09 (-16d) | 60d? → 59d | 0% → 29% |  |  | was named FNQ - Ssistemas de Gestão |
| 2 | **Construção** | 2010-12-01 A | 2011-02-09 → 2011-01-26 (-14d) | 48d → 47d | 0% → 32% | 0d → 6d |  |  |
| 3 | **Ambiente** | 2010-12-01 A | 2010-12-13 → 2010-12-15 (+2d) | 9d → 13d | 0% → 33% | 0d → 34d |  |  |
| 4 | Montagem do Ambiente | 2010-12-01 A | 2010-12-02 A |  | 0% → 100% | 0d → none |  | resources ANL2; ANL1 → Fabio; Fernando |
| 5 | Definição Arquitetura | 2010-12-02 A | 2010-12-03 A |  | 0% → 100% | 0d → none |  | resources ANL2; ANL1 → Fabio; Fernando |
| 6 | Importação de dados | 2010-12-01 A | 2010-12-13 → 2010-12-10 (-3d) |  | 0% → 25% | 39d → 37d |  |  |
| 7 | Elaboração dos Scripts de Teste | 2010-12-01 → 2010-12-11 (+10d) | 2010-12-06 → 2010-12-15 (+9d) |  |  | 44d → 37d | none → 6 | resources ANLQ → ANdrei |
| 8 | **1a. Iteração** | 2010-12-06 → 2010-12-01 A (-5d) | 2011-02-09 → 2011-01-26 (-14d) | 45d → 47d | 0% → 32% | 0d → 6d |  |  |
| 9 | **Identidade Visual** | 2010-12-06 A | 2010-12-08 A |  | 0% → 100% | 0d → none |  |  |
| 10 | Skins | 2010-12-06 A | 2010-12-07 → 2010-12-08 A (+1d) |  | 0% → 100% | 0d → none |  | resources ANL1; ANL2 → Fernando; Fabio |
| 11 | Identidade Básica | 2010-12-07 A | 2010-12-08 A |  | 0% → 100% | 0d → none |  | resources ANL1; ANL2 → Fabio; Fernando |
| 12 | **Segurança** | 2010-12-09 A | 2010-12-17 → 2010-12-22 A (+5d) | 7d → 12d | 0% → 100% | 7d → none |  |  |
| 13 | Manter Usuário | 2010-12-16 → 2010-12-09 A (-7d) | 2010-12-16 → 2010-12-09 A (-7d) |  | 0% → 100% | 7d → none | Manter Grupo de Acesso → 11 | resources ANL1 → Fernando |
| 14 | Autenticar Sistema | 2010-12-10 → 2010-12-13 A (+3d) | 2010-12-13 → 2010-12-14 A (+1d) |  | 0% → 100% | 7d → none | 15 → 13 | resources ANL1 → Fernando |
| 15 | Alterar Senha | 2010-12-09 → 2010-12-15 A (+6d) | 2010-12-09 → 2010-12-15 A (+6d) |  | 0% → 100% | 7d → none | 11 → 14 | resources ANL1 → Fernando |
| 16 | Manter Associação Usuário x Grupo de Acesso | 2010-12-27 → 2010-12-17 A (-10d) | 2010-12-27 → 2010-12-21 A (-6d) | 1d → 3d | 0% → 100% | 7d → none | 50 → 15 | resources ANL1 → Fernando |
| 17 | Solicitar Senha | 2010-12-17 → 2010-12-22 A (+5d) | 2010-12-17 → 2010-12-22 A (+5d) |  | 0% → 100% | 7d → none | 13 → 16 | resources ANL1 → Fernando |
| 18 | **Administrativo** | 2010-12-09 A | 2010-12-30 → 2010-12-22 (-8d) | 15d → 12d | 0% → 83% | 0d → 28d |  |  |
| 19 | Escritorio Regional | 2010-12-30 → 2010-12-09 A (-21d) | 2010-12-30 → 2010-12-09 A (-21d) |  | 0% → 100% | 7d → none | 51 → 11 | was named Manter Escritório Regional; resources ANL1 → Fabio |
| 20 | Gerenciar Etapas MPE | 2010-12-16 A | 2010-12-17 A |  | 0% → 100% | 0d → none | 23 → 19 | resources ANL2 → Fabio |
| 21 | Manter Grupo de Empresa | 2010-12-09 → 2010-12-20 A (+11d) | 2010-12-09 → 2010-12-20 A (+11d) |  | 0% → 100% | 0d → none | 11 → 20 | resources ANL2 → Fabio |
| 22 | Geração de Logs |  |  |  |  | 0d → 28d | Iniciar Turma → 21 | resources ANL2 → Fabio |
| 23 | Visualizar Resumo | 2010-12-15 → 2010-12-22 A (+7d) | 2010-12-15 → 2010-12-22 A (+7d) |  | 0% → 100% | 0d → none | Manter Turma → 22 | resources ANL2 → Fabio |
| 24 | **Inscrição e Questionário** | 2010-12-22 → 2010-12-23 A (+1d) | 2011-01-12 → 2011-01-14 (+2d) | 14d → 18d | 0% → 75% | 0d → 2d |  |  |
| 25 | Manter Inscrição Administrador | 2010-12-22 → 2010-12-23 A (+1d) | 2010-12-22 → 2010-12-23 A (+1d) |  | 0% → 100% | 0d → none | 22 → 23 | resources ANL2 → Fabio |
| 26 | Manter Inscrição Empresa | 2010-12-23 → 2010-12-27 A (+4d) | 2010-12-23 → 2010-12-29 A (+6d) | 1d → 3d | 0% → 100% | 0d → none |  | resources ANL2 → Fernando |
| 27 | Responder Questionário | 2010-12-27 → 2011-01-07 A (+11d) | 2010-12-29 → 2011-01-11 A (+13d) |  | 0% → 100% | 0d → none | 26 → none | constraint none → start no earlier than 2011-01-07; resources ANL2 → Thiago |
| 28 | Enviar Questionário | 2011-01-07 → 2011-01-12 A (+5d) | 2011-01-11 → 2011-01-14 (+3d) |  | 0% → 10% |  | 55 → 27 | resources ANL1 → Thiago |
| 29 | Relatorio Inscritas | 2011-01-12 → 2010-12-23 A (-20d) | 2011-01-12 → 2010-12-27 A (-16d) |  | 0% → 100% | 7d → none | 28 → 25 | resources ANL1 → Fabio |
| 30 | **Pontuação e RAA** | 2011-01-13 → 2011-01-05 A (-8d) | 2011-01-18 → 2011-01-10 (-8d) | 4d → 5d | 0% → 40% | 7d → 14d |  |  |
| 31 | Gerar RAA | 2011-01-13 → 2011-01-05 A (-8d) | 2011-01-14 → 2011-01-06 A (-8d) |  | 0% → 100% | 7d → none | Manter Contato → none | constraint none → start no earlier than 2011-01-05; resources ANL1 → Robinson |
| 32 | Visualizar Histórico Pontuação | 2011-01-17 → 2011-01-07 (-10d) | 2011-01-18 → 2011-01-07 (-11d) | 2d → 1d |  | 7d → 8d |  | resources ANL1 → none |
| 33 | Enviar Relatório por E-mail | 2011-01-21 → 2011-01-08 (-13d) | 2011-01-24 → 2011-01-10 (-14d) |  |  | 7d → 17d | Gerar Relatório → 32 | resources ANL1 → none |
| 34 | **Ranking e Avaliação** | 2011-01-03 → 2011-01-13 (+10d) | 2011-01-20 → 2011-01-18 (-2d) | 14d → 5d |  |  |  |  |
| 35 | Empresas Candidatas | 2011-01-03 → 2011-01-13 (+10d) | 2011-01-05 → 2011-01-17 (+12d) | 3d → 4d |  | 0d → 8d | 53 → 26 | constraint none → start no earlier than 2011-01-13; resources ANL2 → Fernando |
| 36 | Empresas Classificadas | 2011-01-06 → 2011-01-13 (+7d) | 2011-01-10 → 2011-01-17 (+7d) | 3d → 4d |  |  | 35 → 29 | constraint none → start no earlier than 2011-01-13; resources ANL2 → Fabio |
| 37 | Empresas Finalistas | 2011-01-19 → 2011-01-13 (-6d) | 2011-01-19 → 2011-01-17 (-2d) | 1d → 4d |  | 7d → 5d |  | constraint none → start no earlier than 2011-01-13; resources ANL1 → Robinson |
| 38 | Manter Avaliação de Classificadas | 2011-01-12 → 2011-01-15 (+3d) | 2011-01-13 → 2011-01-17 (+4d) |  |  | 0d → 5d | Classificada Nacional → 28 | resources ANL2 → Thiago |
| 39 | Exportar Relatório Ranking | 2011-01-20 → 2011-01-18 (-2d) | 2011-01-20 → 2011-01-18 (-2d) |  |  | 7d → 0d | 37 → 36 | resources ANL1 → Fabio |
| 40 | Gerar Formulário de Visitas | 2011-01-17 → 2011-01-18 (+1d) | 2011-01-17 → 2011-01-18 (+1d) |  |  | 0d → 5d | Visualizar Ranking → 37 | resources ANL2 → Robinson |
| 41 | **Relatório** |  | 2011-02-03 → 2011-01-24 (-10d) | 12d → 6d |  | 0d → 1d |  |  |
| 42 | Preenchimento de Inscrições | 2011-01-28 → 2011-01-18 (-10d) | 2011-01-31 → 2011-01-20 (-11d) | 2d → 3d |  | 7d → 8d | 46 → 35 | resources ANL1 → Fernando |
| 43 | Número de Participantes por Etapa | 2011-01-24 → 2011-01-18 (-6d) | 2011-01-26 → 2011-01-20 (-6d) | 2d → 3d |  | 0d → 5d | 47 → 38 | resources ANL2 → Thiago |
| 44 | Empresas Inscritas e Candidatas por digitador | 2011-01-31 → 2011-01-21 (-10d) | 2011-02-01 → 2011-01-24 (-8d) | 2d → 3d |  | 0d → 2d | Panorama das respostas dos Questionários → 42 | resources ANL2 → Fernando |
| 45 | Relação de Participantes por Região | 2011-02-02 → 2011-01-19 (-14d) | 2011-02-03 → 2011-01-21 (-13d) | 2d → 3d |  |  | Gerar Relatório → 39 | resources ANL2 → Fabio |
| 46 | Desempenho Global e Panorama de Respostas dos Questionários | 2011-01-26 → 2011-01-19 (-7d) | 2011-01-27 → 2011-01-24 (-3d) | 2d → 5d |  | 7d → 5d | 33 → 40 | was named Desempenho Global; resources ANL1 → Robinson |
| 47 | Imprimir Relatório | 2011-01-20 → 2011-01-21 (+1d) | 2011-01-21 → 2011-01-22 (+1d) |  |  | 0d → 5d | Gerar Gráfico → 43 | resources ANL2 → Thiago |
| 48 | Exportar Relatório | 2011-02-01 → 2011-01-24 (-8d) | 2011-02-01 → 2011-01-24 (-8d) | 0d → 1d |  | 0d → 5d | 44 → 47 | resources ANL2 → Thiago |
| 50 | Manter Arquivos | 2010-12-22 → 2011-01-11 A (+20d) | 2010-12-23 → 2011-01-12 (+20d) |  | 0% → 90% | 7d → 14d | Gerenciar Etapa → none | resources ANL1 → none |
| 51 | Manter Atendimento | 2010-12-28 → 2010-12-01 (-27d) | 2010-12-29 → 2010-12-02 (-27d) |  |  | 7d → 41d | 16 → none | resources ANL1 → none |
| 52 | Manter Notícia | 2010-12-10 → 2010-12-01 (-9d) | 2010-12-10 → 2010-12-01 (-9d) |  |  | 0d → 42d | 21 → none | resources ANL2 → none |
| 53 | Imprimir Etiquetas | 2010-12-30 → 2010-12-01 (-29d) | 2010-12-30 → 2010-12-01 (-29d) |  |  | 0d → 42d | 27 → none | resources ANL2 → none |
| 54 | Atualizar Histórico SIACWEB | 2011-01-03 → 2010-12-01 (-33d) | 2011-01-04 → 2010-12-06 (-29d) | 2d → 5d |  | 7d → 42d | 19 → none | resources ANL1 → none |
| 55 | Atualizar Inscrição SIACWEB | 2011-01-05 → 2010-12-01 (-35d) | 2011-01-06 → 2010-12-03 (-34d) | 2d → 3d |  | 7d → 44d | 54 → none | resources ANL1 → none |
| 56 | **Finalização da 1a Iteração** | 2011-02-04 → 2011-01-22 (-13d) | 2011-02-09 → 2011-01-26 (-14d) |  |  |  |  |  |
| 57 | Testes | 2011-02-04 → 2011-01-22 (-13d) | 2011-02-08 → 2011-01-25 (-14d) |  |  |  |  | resources ANLQ → Ramon |
| 58 | Aceite | 2011-02-09 → 2011-01-26 (-14d) | 2011-02-09 → 2011-01-26 (-14d) |  |  |  |  | resources none → FNQ |
| 60 | Instalação em ambiente de homologação |  |  |  |  | 46d → 41d |  | resources none → Vinit |
| 61 | Reunião de Acompanhamento - Status Report |  |  |  |  | 46d → 41d |  | resources none → Vinit |
| 62 | **Implantação** | 2011-02-10 → 2011-01-27 (-14d) | 2011-02-25 → 2011-02-09 (-16d) | 12d? → 12d |  |  |  |  |
| 63 | **Atividades de Implantação** | 2011-02-10 → 2011-01-27 (-14d) | 2011-02-15 → 2011-01-31 (-15d) |  |  |  |  |  |
| 64 | Instalação no Ambiente de Produção | 2011-02-10 → 2011-01-27 (-14d) | 2011-02-10 → 2011-01-27 (-14d) |  |  |  |  | resources none → Vinit |
| 65 | Testes Integrados - Cenários de Teste e Correção de Bugs | 2011-02-11 → 2011-01-28 (-14d) | 2011-02-15 → 2011-01-31 (-15d) |  |  |  |  | resources none → Vinit |
| 66 | Homologação pelo Cliente | 2011-02-16 → 2011-02-01 (-15d) | 2011-02-18 → 2011-02-03 (-15d) |  |  |  |  | resources none → FNQ |
| 67 | Aceite | 2011-02-21 → 2011-02-04 (-17d) | 2011-02-21 → 2011-02-04 (-17d) |  |  |  |  | resources none → FNQ |
| 68 | Elaboração e Aplicação do Treinamento | 2011-02-22 → 2011-02-05 (-17d) | 2011-02-24 → 2011-02-08 (-16d) |  |  |  |  | resources none → Vinit |
| 69 | Reunião de Encerrameto | 2011-02-25 → 2011-02-09 (-16d) | 2011-02-25 → 2011-02-09 (-16d) |  |  |  |  | resources none → Vinit |
| 70 | Go-Live & Suporte | 2011-02-25 → 2011-02-09 (-16d) | 2011-02-25 → 2011-02-09 (-16d) |  |  |  |  | resources none → Vinit |
